# mqp-gantt

Schedule from MS Project, 2010-07-20 to 2010-12-06, A marks actual dates.

## Calendars

- Standard: Mon-Fri 08:00-12:00, 13:00-17:00; Sat-Sun off.

## Schedule

| ID | WBS | Task | Duration | Start | Finish | Predecessors | Complete | Remaining | Total slack | Free slack | Constraint |
| --- | --- | --- | --- | --- | --- | --- | --- | --- | --- | --- | --- |
| 1 | 1.0 | **Development Phase** | 75.5d? | 2010-07-20 A | 2010-11-02 |  | 1% | 74.98d? | 0.5d |  | must start on 2010-07-20 |
| 2 | 1.1 | **RTL Design** | 71d | 2010-07-26 A | 2010-11-01 |  | 1% | 70.06d | 1d |  | must start on 2010-07-20 |
| 3 | 1.1.1 | **Top Level** | 27d | 2010-07-26 | 2010-08-31 |  |  |  | 0d |  | must start on 2010-07-26 |
| 4 | 1.1.1.1 | Frontend (Main) | 3d | 2010-07-26 | 2010-07-28 |  |  |  | 0d |  | must start on 2010-07-26 |
| 5 | 1.1.1.2 | Clock Controller (CLK) | 2d | 2010-07-29 | 2010-07-30 | 4 |  |  | 0d |  | must start on 2010-07-29 |
| 6 | 1.1.1.3 | **I/O Controllers** | 22d | 2010-08-02 | 2010-08-31 |  |  |  | 0d |  | must start on 2010-08-02 |
| 7 | 1.1.1.3.1 | DDR3 | 6d | 2010-08-02 | 2010-08-09 | 4, 5 |  |  | 0d |  | must start on 2010-08-02 |
| 8 | 1.1.1.3.2 | DVI | 5d | 2010-08-10 | 2010-08-16 | 4, 5 |  |  | 56d |  | start no earlier than 2010-08-10 |
| 9 | 1.1.1.3.3 | Write Interface | 4d | 2010-08-26 | 2010-08-31 | 4, 5 |  |  | 37d | 0d | start no earlier than 2010-08-26 |
| 10 | 1.1.1.4 | Memory Interface (MI) | 3d | 2010-08-05 | 2010-08-09 | 4 |  |  | 5d |  | start no earlier than 2010-08-05 |
| 11 | 1.1.2 | **Video Interface (VI)** | 5d | 2010-08-13 | 2010-08-19 | 4 |  |  | 0d |  | must start on 2010-07-29 |
| 12 | 1.1.2.1 | Frontend | 2d | 2010-08-13 | 2010-08-16 | 4 |  |  | 0d |  | must start on 2010-08-13 |
| 13 | 1.1.2.2 | Framebuffer | 3d | 2010-08-17 | 2010-08-19 | 10, 12 |  |  | 0d |  | must start on 2010-08-17 |
| 14 | 1.1.3 | **Graphics Processing Unit (GPU)** | 5.5d | 2010-09-01 | 2010-09-08 | 4 |  |  | 39.5d |  | must start on 2010-07-20 |
| 15 | 1.1.3.1 | Frontend (Command FIFO) | 2d | 2010-09-01 | 2010-09-02 | 4 |  |  | 39.5d | 0d | start no earlier than 2010-09-01 |
| 16 | 1.1.3.2 | Decoder | 3.5d | 2010-09-03 | 2010-09-08 | 13, 15 |  |  | 39.5d |  | start no earlier than 2010-09-03 |
| 17 | 1.1.4 | **Vertex and Transformation Unit (VTU)** | 25d | 2010-09-21 A | 2010-10-25 | 4 | 4% | 24d | 6d |  | must start on 2010-08-10 |
| 18 | 1.1.4.1 | Frontend | 2d | 2010-09-21 | 2010-09-22 | 4 |  |  | 23d | 0d | start no earlier than 2010-09-21 |
| 19 | 1.1.4.2 | **Geometry Processor (GP)** | 7d | 2010-09-23 A | 2010-10-01 | 18 | 14% | 6d | 22d |  |  |
| 20 | 1.1.4.2.1 | Vertex Banks | 3d | 2010-09-23 A | 2010-09-27 |  | 33% | 2d | 26d |  |  |
| 21 | 1.1.4.2.2 | Vertex Decoder | 4d | 2010-09-28 | 2010-10-01 |  |  |  | 22d |  | start no earlier than 2010-09-28 |
| 22 | 1.1.4.3 | **Matrix Processor (MP)** | 16d | 2010-10-04 | 2010-10-25 | 18 |  |  | 6d |  |  |
| 23 | 1.1.5.2 | Modelview Matrix (and Stack) | 4d | 2010-10-04 | 2010-10-07 |  |  |  | 18d |  | start no earlier than 2010-10-04 |
| 24 | 1.1.5.3 | Projection Matrix (and Stack) | 3d | 2010-10-08 | 2010-10-12 |  |  |  | 15d |  | start no earlier than 2010-10-08 |
| 25 | 1.1.5.4 | Matrix Load/Store/Push/Pop | 4d | 2010-10-13 | 2010-10-18 | 22 |  |  | 11d |  | start no earlier than 2010-10-13 |
| 26 | 1.1.5.5 | Matrix Multiplier | 5d | 2010-10-19 | 2010-10-25 |  |  |  | 6d |  | start no earlier than 2010-10-19 |

| ID | WBS | Task | Duration | Start | Finish | Predecessors | Total slack | Free slack | Constraint |
| --- | --- | --- | --- | --- | --- | --- | --- | --- | --- |
| 27 | 1.1.6 | **Rasterizer (RAS)** | 52d | 2010-08-20 | 2010-11-01 | 4 | 1d |  | must start on 2010-07-29 |
| 28 | 1.1.6.1 | Frontend | 2d | 2010-08-20 | 2010-08-23 | 4 | 41d | 0d | start no earlier than 2010-08-20 |
| 29 | 1.1.6.2 | Points | 2d | 2010-08-24 | 2010-08-25 | 28 | 41d | 10d | start no earlier than 2010-08-24 |
| 30 | 1.1.6.3 | Lines | 4d | 2010-09-09 | 2010-09-14 | 28, 29 | 31d | 0d | start no earlier than 2010-09-09 |
| 31 | 1.1.6.4 | Triangles | 4d | 2010-09-15 | 2010-09-20 | 28, 30 | 31d |  | finish no earlier than 2010-09-17 |
| 32 | 1.1.6.7 | Z-Buffer | 5d | 2010-10-26 | 2010-11-01 | 28 | 1d |  | start no earlier than 2010-10-26 |
| 33 | 1.2 | **Software Design** | 75.5d? | 2010-07-20 | 2010-11-02 |  | 0.5d |  |  |
| 34 | 1.2.1 | Software Emulator | 24d? | 2010-07-20 | 2010-08-20 |  | 15.5d | 15d |  |
| 35 | 1.2.2 | Graphics API | 22.5d? | 2010-09-13 | 2010-10-13 | 34 | 0.5d | 0d | start no earlier than 2010-09-13 |
| 36 | 1.2.3 | Driver | 8d? | 2010-09-01 | 2010-09-10 | 9 | 37d |  | start no earlier than 2010-09-01 |
| 37 | 1.2.4 | Test and Benchmarking Demos | 14d? | 2010-10-13 | 2010-11-02 | 35 | 0.5d |  |  |
| 38 | 2 | **Test and Benchmarking Phase** | 24d? | 2010-11-03 | 2010-12-06 | 1 | 0d |  |  |
| 39 | 2.1 | RTL Verification | 24d? | 2010-11-03 | 2010-12-06 |  | 0d |  | start no earlier than 2010-11-03 |
| 40 | 2.2 | Software Verification | 24d? | 2010-11-03 | 2010-12-06 |  | 0d |  | start no earlier than 2010-11-03 |
